# Proyecto3_2

Schedule from MS Project, 2015-02-12 to 2015-04-15, costs in €.

## Calendars

- Estándar: Mon-Fri 09:00-13:00, 15:00-19:00; Sat-Sun off.

## Resources

| Resource |
| --- |
| Enrique Moreno |
| Encarna Marín |
| Sebastián Del Rio |
| Vicente Pérez |
| Cursos .NET |
| Alba Martínez |
| Ana Sebastián (A) |
| Jose Luis Fernández |
| María Peris |
| Silvia Cerezo (T) |
| Silvia Cerezo (P) |
| Ana Sebastián (PW) |
| Rafael Benito |
| Maquinas expendedoras |
| Ordenadores (taquilla) |
| Ordenadores (web) |
| Muebles |
| Servidor |

## Schedule

| ID | WBS | Task | Type | Duration | Start | Finish | Predecessors | Total slack | Free slack | Constraint | Resources | Work | Cost |
| --- | --- | --- | --- | --- | --- | --- | --- | --- | --- | --- | --- | --- | --- |
| 1 | 1 | **Responsabilidad de la dirección** |  | 16.5d? | 2015-02-18 | 2015-03-12 |  | 0d |  |  |  | 16h | 165 |
| 2 | 1.1 | 1 reunión con cliente |  | 1d | 2015-02-18 | 2015-02-19 |  | 38.25d |  |  | Enrique Moreno | 8h | 82.5 |
| 3 | 1.2 | Presentación de proyecto al cliente | manual | 1d | 2015-03-11 | 2015-03-12 | 59 |  |  |  | Enrique Moreno | 8h | 82.5 |
| 4 | 1.3 | Gastos indirectos | manual | 1d? | 2015-02-18 | 2015-02-18 |  |  |  |  |  |  |  |
| 5 | 1.4 | Taquillas y equipos instalados | manual | 1d? | 2015-02-18 | 2015-02-18 |  |  |  |  |  |  |  |
| 6 | 1.5 | Finalización de sala 3D | manual | 1d? | 2015-02-18 | 2015-02-18 |  |  |  |  |  |  |  |
| 7 | 1.6 | Finalización de sala digital | manual | 1d? | 2015-02-18 | 2015-02-18 |  |  |  |  |  |  |  |
| 8 | 1.7 | Finalización de sala VO | manual | 1d? | 2015-02-18 | 2015-02-18 |  |  |  |  |  |  |  |
| 9 | 1.8 | Entrega final | manual | 1d? | 2015-02-18 | 2015-02-18 |  |  |  |  |  |  |  |
| 10 | 2 | **Gestión de recursos** |  | 13.25d | 2015-02-12 | 2015-03-03 |  | 2.25d |  |  |  | 291.2h | 3,014.62 |
| 11 | 2.1 | Busqueda de proveedores de máquinas expendedoras |  | 5.62d | 2015-02-12 | 2015-02-19 |  | 37.25d |  | finish no earlier than 2015-02-19 | Silvia Cerezo (T) [20%] | 9h | 101.25 |
| 12 | 2.2 | Busqueda de proveedores de ordenadores |  | 1d | 2015-02-18 | 2015-02-19 |  | 38.25d |  |  | Rafael Benito [20%] | 1.6h | 13.75 |
| 13 | 2.3 | Busqueda de proveedores de muebles |  | 1.12d | 2015-02-18 | 2015-02-19 |  | 39.12d |  |  | Rafael Benito [20%] | 1.8h | 15.47 |
| 14 | 2.4 | Busqueda de proveedores de proyectores |  | 1.12d | 2015-02-18 | 2015-02-19 |  | 39.12d |  |  | Rafael Benito [20%] | 1.8h | 15.47 |
| 15 | 2.5 | Busqueda de empresas de electricidad |  | 1.12d | 2015-02-18 | 2015-02-19 |  | 39.12d |  |  | Rafael Benito [20%] | 1.8h | 15.47 |
| 16 | 2.6 | Busqueda de instaladores de aire acondicionado |  | 1.12d | 2015-02-18 | 2015-02-19 |  | -1.5d | 0d |  | Rafael Benito [20%] | 1.8h | 15.47 |
| 17 | 2.7 | Busqueda de instaladores de moqueta/sillones |  | 1d | 2015-02-18 | 2015-02-19 |  | 38.25d |  |  | Silvia Cerezo (T) [20%] | 1.6h | 18 |
| 18 | 2.8 | Busqueda de cursos .NET |  | 1d | 2015-02-18 | 2015-02-18 |  | 38.25d |  |  | Silvia Cerezo (T) [20%] | 1.4h | 15.75 |
| 19 | 2.9 | Contratación de instaladores eléctricos |  | 1d | 2015-02-18 | 2015-02-19 |  | 38.25d |  |  | Silvia Cerezo (T) [20%] | 1.6h | 18 |
| 20 | 2.10 | Contratación de instaladores de AC |  | 1d | 2015-02-18 | 2015-02-19 |  | 38.25d |  |  | Silvia Cerezo (T) [20%] | 1.6h | 18 |
| 21 | 2.11 | Contratación de instaladores moqueda/sillones |  | 1d | 2015-02-18 | 2015-02-19 |  | 38.25d |  |  | Ana Sebastián (A) [20%] | 1.6h | 14 |
| 22 | 2.12 | Matriculación en cursos |  | 1d | 2015-02-18 | 2015-02-19 |  | 38.25d |  |  | Ana Sebastián (A) [20%] | 1.6h | 14 |
| 23 | 2.13 | Cursos de .NET | manual | 8.5d | 2015-02-19 | 2015-03-03 |  |  |  |  | Cursos .NET; Encarna Marín; Enrique Moreno; Sebastián Del Rio; Vicente Pérez | 264h | 2,740 |
| 24 | 3 | **Realización del producto** |  | 1d? | 2015-02-18 | 2015-02-18 |  |  |  |  |  | 1347.2h | 47,541.22 |
| 25 | 3.1 | Planificación instalación de máquinas |  | 1d | 2015-02-18 | 2015-02-19 |  | -0.25d | 0d |  | Jose Luis Fernández [20%] | 1.6h | 11 |
| 26 | 3.2 | Planificación instalación de salas |  | 1d | 2015-02-18 | 2015-02-19 |  | -0.25d | 0d |  | Jose Luis Fernández [20%] | 1.6h | 11 |
| 27 | 3.3 | Planificación portal web |  | 1d | 2015-02-18 | 2015-02-19 |  | -0.25d | 0d |  | Jose Luis Fernández [20%] | 1.6h | 11 |
| 28 | 3.4 | Compra de las máquinas |  | 1d | 2015-02-18 | 2015-02-19 |  | -0.25d | 0d |  | Jose Luis Fernández [10%]; Maquinas expendedoras [2000%] | 0.8h | 4,005.5 |
| 29 | 3.5 | Compra de ordenadores |  | 1d | 2015-02-18 | 2015-02-19 |  | -0.25d | 0d |  | Jose Luis Fernández [10%]; Ordenadores (taquilla) [2000%]; Ordenadores (web) [300%] | 0.8h | 10,135.5 |
| 30 | 3.6 | Comprar servidor |  | 1.12d | 2015-02-19 | 2015-02-20 | 16 | -1.5d | 0d |  | Rafael Benito; Servidor | 9h | 2,077.34 |
| 31 | 3.7 | Compra de muebles |  | 1d | 2015-02-18 | 2015-02-19 |  | -0.25d | 0d |  | Jose Luis Fernández [10%]; Muebles | 0.8h | 20,005.5 |
| 32 | 3.8 | Instalación de máquinas |  | 1d | 2015-02-18 | 2015-02-18 |  | 0d |  |  |  |  |  |
| 33 | 3.9 | Instalación de ordenadores |  | 1d | 2015-02-18 | 2015-02-18 |  | 0d |  |  |  |  |  |
| 34 | 3.10 | Instalación de mobiliario |  | 1d | 2015-02-18 | 2015-02-18 |  | 0d |  |  |  |  |  |

| ID | WBS | Task | Type | Duration | Start | Finish | Predecessors | Total slack | Free slack | Constraint | Resources | Work | Cost |
| --- | --- | --- | --- | --- | --- | --- | --- | --- | --- | --- | --- | --- | --- |
| 35 | 3.11 | **Sala 3d** |  | 1d? | 2015-02-18 | 2015-02-18 |  | 0d |  |  |  |  |  |
| 36 | 3.11.1 | Comprar proyector y gafas | manual | 1d? | 2015-02-18 | 2015-02-18 |  |  |  |  |  |  |  |
| 37 | 3.11.2 | Poner butacas | manual | 1d? | 2015-02-18 | 2015-02-18 |  |  |  |  |  |  |  |
| 38 | 3.11.3 | Instalar aire acondicionado | manual | 1d? | 2015-02-18 | 2015-02-18 |  |  |  |  |  |  |  |
| 39 | 3.11.4 | Moqueta | manual | 1d | 2015-02-18 | 2015-02-18 |  |  |  |  |  |  |  |
| 40 | 3.11.5 | Iluminado | manual | 1d | 2015-02-18 | 2015-02-18 |  |  |  |  |  |  |  |
| 41 | 3.11.6 | Limpieza | manual | 1d | 2015-02-18 | 2015-02-18 |  |  |  |  |  |  |  |
| 42 | 3.12 | **Sala digital** |  | 1d? | 2015-02-18 | 2015-02-18 |  | 0d |  |  |  |  |  |
| 43 | 3.12.1 | Compra de proyector | manual | 1d? | 2015-02-18 | 2015-02-18 |  |  |  |  |  |  |  |
| 44 | 3.12.2 | Poner butacas | manual | 1d | 2015-02-18 | 2015-02-18 |  |  |  |  |  |  |  |
| 45 | 3.12.3 | Instalar aire acondicionado | manual | 1d | 2015-02-18 | 2015-02-18 |  |  |  |  |  |  |  |
| 46 | 3.12.4 | Moqueta | manual | 1d | 2015-02-18 | 2015-02-18 |  |  |  |  |  |  |  |
| 47 | 3.12.5 | Iluminado | manual | 1d | 2015-02-18 | 2015-02-18 |  |  |  |  |  |  |  |
| 48 | 3.12.6 | Limpieza | manual | 1d | 2015-02-18 | 2015-02-18 |  |  |  |  |  |  |  |
| 49 | 3.13 | **Sala VO** |  | 1d? | 2015-02-18 | 2015-02-18 |  | 0d |  |  |  |  |  |
| 50 | 3.13.1 | Compra de proyector | manual | 1d? | 2015-02-18 | 2015-02-18 |  |  |  |  |  |  |  |
| 51 | 3.13.2 | Poner butacas | manual | 1d | 2015-02-18 | 2015-02-18 |  |  |  |  |  |  |  |
| 52 | 3.13.3 | Instalar aire acondicionado | manual | 1d | 2015-02-18 | 2015-02-18 |  |  |  |  |  |  |  |
| 53 | 3.13.4 | Moqueta | manual | 1d | 2015-02-18 | 2015-02-18 |  |  |  |  |  |  |  |
| 54 | 3.13.5 | Iluminado | manual | 1d | 2015-02-18 | 2015-02-18 |  |  |  |  |  |  |  |
| 55 | 3.13.6 | Limpieza | manual | 1d | 2015-02-18 | 2015-02-18 |  |  |  |  |  |  |  |
| 56 | 3.14 | **Portal web** |  | 39.25d? | 2015-02-19 | 2015-04-15 |  |  |  |  |  | 1331h | 11,284.38 |
| 57 | 3.14.1 | Diseño web (cliente) |  | 6.12d | 2015-02-19 | 2015-02-27 |  | 27.12d | 0d |  | Alba Martínez; Ana Sebastián (A) | 98h | 826.88 |
| 58 | 3.14.2 | Diseño web (gráfico) |  | 6.12d | 2015-02-19 | 2015-02-27 |  | 29.12d | 0d |  | Jose Luis Fernández; María Peris | 98h | 719.69 |
| 59 | 3.14.3 | Diseño web (servidor) |  | 6.75d | 2015-03-03 | 2015-03-11 | 23 | 0d |  |  | Encarna Marín; Enrique Moreno; Sebastián Del Rio | 144h | 1,290 |
| 60 | 3.14.4 | Edición de videos |  | 3d | 2015-02-27 | 2015-03-04 | 58 | 29.12d | 0d |  | Jose Luis Fernández | 24h | 165 |
| 61 | 3.14.5 | Publicación de videos |  | 1d | 2015-03-04 | 2015-03-05 | 60 | 29.12d |  |  | Jose Luis Fernández | 8h | 55 |
| 62 | 3.14.6 | Adquisición de recursos multimedia |  | 1.12d | 2015-02-27 | 2015-03-02 | 58 | 32d |  |  | María Peris | 9h | 70.31 |
| 63 | 3.14.7 | Programación web (cliente) |  | 6d | 2015-02-27 | 2015-03-09 | 57 | 27.12d | 0d |  | Alba Martínez; Ana Sebastián (A) | 96h | 810 |
| 64 | 3.14.8 | Entrega de web (1) | milestone, manual | 0d | 2015-03-09 | 2015-03-09 | 63 |  |  |  | Alba Martínez; Ana Sebastián (A) |  |  |
| 65 | 3.14.9 | Programación compra de entradas |  | 5d | 2015-03-11 | 2015-03-18 | 59 | 19.75d |  |  | Sebastián Del Rio | 40h | 337.5 |
| 66 | 3.14.10 | Programación de opiniones |  | 4.5d | 2015-03-12 | 2015-03-19 | 3 | 0d |  | start no earlier than 2015-03-12 | Enrique Moreno | 36h | 371.25 |
| 67 | 3.14.11 | Programación de avisos |  | 5d | 2015-03-11 | 2015-03-18 | 59 | 19.75d |  |  | Encarna Marín | 40h | 325 |
| 68 | 3.14.12 | Programación control de actualizaciones (peliculas y sesiones) | manual | 5d | 2015-03-03 | 2015-03-10 | 23 |  |  |  | Vicente Pérez | 35h | 328.12 |
| 69 | 3.14.13 | Programación de estadísticas | manual | 5d | 2015-03-03 | 2015-03-10 | 23 |  |  |  | Silvia Cerezo (P) | 40h | 275 |
| 70 | 3.14.14 | Programación web (servidor) |  | 5.62d | 2015-03-19 | 2015-03-26 | 66 | 0d |  |  | Sebastián Del Rio; Silvia Cerezo (P); Encarna Marín; Enrique Moreno | 160h | 1,350 |
| 71 | 3.14.15 | Terminar programación cliente | manual | 6d | 2015-03-10 | 2015-03-18 | 68 |  |  |  | Ana Sebastián (PW); María Peris; Vicente Pérez | 138h | 1,158.75 |
| 72 | 3.14.16 | Terminar programación servidor |  | 7d | 2015-03-26 | 2015-04-03 | 70 | 0d |  |  | Encarna Marín; Enrique Moreno; Sebastián Del Rio; Silvia Cerezo (P) | 197h | 1,661.88 |
| 73 | 3.14.17 | Entrega de web (2) | milestone, manual | 0d | 2015-04-03 | 2015-04-03 | 72 |  |  |  |  |  |  |
| 74 | 3.14.18 | Pruebas de web (1) | manual | 7d | 2015-04-03 | 2015-04-14 | 72 |  |  |  | Enrique Moreno; Rafael Benito | 112h | 1,058.75 |
| 75 | 3.14.19 | Instalar SO en servidor | manual | 1d | 2015-02-20 | 2015-02-23 | 30 |  |  |  | Rafael Benito | 8h | 68.75 |
| 76 | 3.14.20 | Configurar servidor | manual | 1d | 2015-02-23 | 2015-02-24 | 75 |  |  |  | Rafael Benito | 8h | 68.75 |
| 77 | 3.14.21 | Configurar router | manual | 1d | 2015-02-24 | 2015-02-25 | 76 |  |  |  | Rafael Benito | 8h | 68.75 |
| 78 | 3.14.22 | Prueba de la instalación de servidor | manual | 3d | 2015-02-25 | 2015-03-02 | 77 |  |  |  | Rafael Benito | 24h | 206.25 |
| 79 | 3.14.23 | Instalación de web en servidor | manual | 1d | 2015-04-03 | 2015-04-06 | 72 |  |  |  | Rafael Benito | 8h | 68.75 |
| 80 | 3.14.24 | Entrega web (3) | milestone, manual | 0d | 2015-04-06 | 2015-04-06 | 79 |  |  |  |  |  |  |
| 81 | 3.14.25 | Pruebas de web (2) | manual | 7d | 2015-04-06 | 2015-04-15 | 79 |  |  |  |  |  |  |
